# Proyecto Befine Store

Schedule from MS Project, 2026-08-10 to 2027-01-22, status date 2026-09-14, A marks actual dates.
Duoc UC - PTY4614

## Calendars

- Estándar: Mon-Fri 08:00-12:00, 13:00-17:00; Sat-Sun off.

## Resources

| Resource |
| --- |
| Iván |
| Carlos |
| Felipe |
| Rotativo |
| Rotativo (líder de sprint) |

## Schedule

| ID | WBS | Task | Duration | Start | Finish | Predecessors | Complete | Remaining | Total slack | Free slack | Constraint | Resources | Work | Actual work | Validador |
| --- | --- | --- | --- | --- | --- | --- | --- | --- | --- | --- | --- | --- | --- | --- | --- |
| 1 | 1 | **Inicio** | 10d | 2026-08-10 A | 2026-08-21 A |  | 100% |  |  |  |  |  | 120h | 120h |  |
| 2 | 1.1 | Elaborar Acta de Constitución | 10d | 2026-08-10 A | 2026-08-21 A |  | 100% |  |  |  | must start on 2026-08-10 | Iván | 80h | 80h | Carlos |
| 3 | 1.2 | Identificar interesados y aprobar inicio | 5d | 2026-08-17 A | 2026-08-21 A |  | 100% |  |  |  | must start on 2026-08-17 | Rotativo | 40h | 40h | Iván |
| 4 | 2 | **Planificación** | 20d | 2026-08-24 A | 2026-09-18 |  | 69% | 6.19d | 90d |  |  |  | 442.8h | 352.4h |  |
| 5 | 2.1 | Reunión de kick-off | 1d | 2026-08-24 A | 2026-08-24 A | 2 | 100% |  |  |  | finish no earlier than 2026-08-24 | Carlos [30%] | 8h | 8h | Iván |
| 6 | 2.2 | **Planes de gestión del proyecto (PMBOK)** | 20d | 2026-08-24 A | 2026-09-18 |  | 71% | 5.71d | 90d |  |  |  | 342.8h | 282h |  |
| 7 | 2.2.1 | Plan de Gestión del Alcance | 5d | 2026-08-24 A | 2026-08-28 A |  | 100% |  |  |  | finish no earlier than 2026-08-28 | Carlos [70%] | 12h | 12h | Iván |
| 8 | 2.2.2 | Plan de Gestión de Requisitos | 5d | 2026-08-24 A | 2026-08-28 A |  | 100% |  |  |  | must start on 2026-08-24 | Felipe | 40h | 40h | Carlos |
| 9 | 2.2.3 | Plan de Gestión de Interesados | 5d | 2026-08-24 A | 2026-08-28 A |  | 100% |  |  |  | must start on 2026-08-24 | Iván | 40h | 40h | Felipe |
| 10 | 2.2.4 | Plan de Gestión del Cronograma | 5d | 2026-08-31 A | 2026-09-04 A |  | 100% |  |  |  | must start on 2026-08-31 | Carlos [50%] | 40h | 40h | Felipe |
| 11 | 2.2.5 | Plan de Gestión de Costos | 5d | 2026-08-31 A | 2026-09-04 A |  | 100% |  |  |  | must start on 2026-08-31 | Carlos [50%] | 20h | 20h | Iván |
| 12 | 2.2.6 | Plan de Gestión de Recursos | 5d | 2026-08-31 A | 2026-09-04 A |  | 100% |  |  |  | must start on 2026-08-31 | Iván | 40h | 40h | Carlos |
| 13 | 2.2.7 | Plan de Gestión de Calidad | 5d | 2026-09-07 A | 2026-09-11 A |  | 100% |  |  |  | must start on 2026-09-07 | Felipe [25%] | 40h | 40h | Carlos |
| 14 | 2.2.8 | Plan de Gestión de Comunicaciones | 5d | 2026-09-07 A | 2026-09-11 A |  | 100% |  |  |  | must start on 2026-09-07 | Felipe [25%] | 10h | 10h | Iván |
| 15 | 2.2.9 | Plan de Gestión de Riesgos | 5d | 2026-09-07 A | 2026-09-11 A |  | 100% |  |  |  | must start on 2026-09-07 | Iván | 40h | 40h | Felipe |
| 16 | 2.2.10 | Plan de Gestión de Adquisiciones | 5d | 2026-09-14 | 2026-09-18 |  |  |  | 90d |  | start no earlier than 2026-09-14 | Iván [50%] | 20h |  | Carlos |
| 17 | 2.2.11 | Plan de Gestión de Cambios | 5d | 2026-09-14 | 2026-09-18 |  |  |  | 90d |  | start no earlier than 2026-09-14 | Iván [50%] | 20h |  | Felipe |
| 18 | 2.2.12 | Plan de Gestión de Configuración | 5d | 2026-09-14 | 2026-09-18 |  |  |  | 90d |  | start no earlier than 2026-09-14 | Carlos [40%] | 16h |  | Felipe |
| 19 | 2.2.13 | Plan de Dirección del Proyecto (consolidado) | 3d | 2026-09-16 | 2026-09-18 |  |  |  | 50d | 0d | start no earlier than 2026-09-16 | Carlos [20%] | 4.8h |  | Iván + Felipe |
| 20 | 2.3 | **Diseño técnico (en paralelo)** | 10d | 2026-09-07 A | 2026-09-18 |  | 60% | 4d | 0d |  |  |  | 92h | 62.4h |  |
| 21 | 2.3.1 | Arquitectura y modelo de datos | 10d | 2026-09-07 A | 2026-09-18 |  | 70% | 3d | 0d |  | must start on 2026-09-07 | Carlos [40%] | 32h | 22.4h | Felipe |
| 22 | 2.3.2 | Diseño de interfaz (mobile-first) | 10d | 2026-09-07 A | 2026-09-18 |  | 50% | 5d | 0d |  | must start on 2026-09-07 | Felipe [50%] | 60h | 40h | Carlos |
| 23 | 3 | **Ejecución** | 45d | 2026-09-18 | 2026-11-20 |  |  |  | 45d |  |  |  | 124h |  |  |
| 24 | 3.1 | Ejecución de sprints de desarrollo | 40d | 2026-09-18 | 2026-11-13 | 19, 21, 22 |  |  | 50d |  | finish no earlier than 2026-11-13 | Rotativo (líder de sprint) [20%] | 64h |  |  |
| 25 | 3.2 | Documentación técnica, manual corto y videos | 10d | 2026-11-02 | 2026-11-13 |  |  |  | 50d |  | start no earlier than 2026-11-02 | Rotativo [10%] | 8h |  |  |
| 26 | 3.3 | Capacitación a usuarios | 5d | 2026-11-09 | 2026-11-13 |  |  |  | 50d |  | start no earlier than 2026-11-09 | Rotativo [10%] | 4h |  |  |
| 27 | 3.4 | Entrega y puesta en marcha | 10d | 2026-11-09 | 2026-11-20 |  |  |  | 45d |  | start no earlier than 2026-11-09 | Carlos [20%]; Iván [20%]; Felipe [20%] | 48h |  |  |

Notes:
- 2: Alcance preliminar, objetivos, supuestos y restricciones.
- 3: Registro de interesados y formalización del inicio.
- 5: Reunión de arranque de la planificación.
- 19: Consolida los 12 planes de gestión. Vence 19-sep.
- 21: Modelo relacional: catálogo, clientes, pedidos y sistema de puntos. Supabase.
- 22: Wireframes y prototipo UX en Flutter/Figma.
- 24: Sprints ágiles de 2 semanas: landing, panel admin, fidelización por puntos, Mercado Pago y OpenFactura.
- 27: Despliegue en ambiente productivo (Docker/GitHub).

| ID | WBS | Task | Duration | Start | Finish | Total slack | Constraint | Resources | Work |
| --- | --- | --- | --- | --- | --- | --- | --- | --- | --- |
| 28 | 4 | **Control** | 45d | 2026-09-21 | 2026-11-20 | 0d |  |  | 288h |
| 29 | 4.1 | Control de alcance, cronograma y costos | 45d | 2026-09-21 | 2026-11-20 | 0d | must start on 2026-09-21 | Rotativo [20%] | 72h |
| 30 | 4.2 | Aseguramiento y control de calidad (pruebas) | 45d | 2026-09-21 | 2026-11-20 | 45d | finish no earlier than 2026-11-20 | Rotativo [20%] | 72h |
| 31 | 4.3 | Monitoreo de riesgos e interesados | 45d | 2026-09-21 | 2026-11-20 | 45d | finish no earlier than 2026-11-20 | Rotativo [20%] | 72h |
| 32 | 4.4 | Control integrado de cambios y configuración | 45d | 2026-09-21 | 2026-11-20 | 45d | finish no earlier than 2026-11-20 | Rotativo [20%] | 72h |
| 33 | 5 | **Cierre** | 50d | 2026-11-16 | 2027-01-22 | 0d |  |  | 360h |
| 34 | 5.1 | Cierre de presupuesto, alcance y cronograma | 50d | 2026-11-16 | 2027-01-22 | 0d | start no earlier than 2026-11-16 | Carlos [20%]; Felipe [20%]; Iván [20%] | 240h |
| 35 | 5.2 | Entrega final de documentos | 6.67d | 2026-11-16 | 2026-11-24 | 43.33d | start no earlier than 2026-11-16 | Carlos [30%]; Felipe [30%]; Iván [30%] | 48h |
| 36 | 5.3 | Reunión de cierre, lecciones aprendidas y presentación a comisión | 10d | 2026-11-16 | 2026-11-27 | 40d | start no earlier than 2026-11-16 | Carlos [30%]; Felipe [30%]; Iván [30%] | 72h |

Notes:
- 29: Seguimiento semanal y pruebas funcionales/integración.
- 30: Seguimiento semanal y pruebas funcionales/integración.
- 31: Seguimiento semanal y pruebas funcionales/integración.
- 32: Seguimiento semanal y pruebas funcionales/integración.
